# Metasepi Project

How a schedule from Planner changed from version to version. A marks actual dates.

## Version 1 (saved 2014-05-11)

Note of the change: Update map and create Bohai Plan

| ID | WBS | Task | Duration | Start | Finish | Predecessors | Constraint |
| --- | --- | --- | --- | --- | --- | --- | --- |
| 1 | 1 | **Translate ATS doc** |  | 2014-05-12 | 2014-06-24 |  |  |
| 2 |  | INT2PROGINATS |  | 2014-05-12 | 2014-06-02 |  |  |
| 3 |  | ATS2TUTORIAL |  | 2014-06-03 | 2014-06-24 | 2 |  |
| 4 | 2 | **ATS demo on tiny CPU** |  | 2014-06-03 | 2014-07-28 | 2 |  |
| 5 |  | AVR support to ATS |  | 2014-06-03 | 2014-06-30 |  |  |
| 6 |  | ARM support to ATS |  | 2014-07-01 | 2014-07-28 | 5 |  |
| 7 |  | OSC@Nagoya | 0d | 2014-07-04 | 2014-07-04 | 5 | must start on 2014-07-04 |
| 8 |  | OSC@Kansai | 0d | 2014-08-01 | 2014-08-01 | 6 | must start on 2014-08-01 |
| 9 |  | ATS OS X installer |  | 2014-07-29 | 2014-08-06 | 6 |  |
| 10 |  | ATS Windows installer |  | 2014-08-07 | 2014-09-03 | 9 |  |
| 11 | 7 | **Ready up Functional IoT** |  | 2014-09-04 | 2014-10-21 | 10 |  |
| 12 |  | Make up ethernet board |  | 2014-09-04 | 2014-09-12 |  | start no earlier than 2014-06-01 |
| 13 |  | STM32 Ethernet test |  | 2014-09-15 | 2014-09-23 | 12 |  |
| 14 |  | gdbserver test |  | 2014-09-24 | 2014-10-02 | 13 |  |
| 15 |  | Write manual |  | 2014-10-03 | 2014-10-21 | 14 |  |
| 16 |  | Meetup at Nagoya | 0d | 2014-10-21 | 2014-10-21 | 15 |  |
| 17 | 8 | **ATS snatches NetBSD** |  | 2014-07-29 | 2014-09-08 | 6 |  |
| 18 |  | Setup raspberrypi |  | 2014-07-29 | 2014-08-18 |  |  |
| 19 |  | Choose snatch target |  | 2014-08-19 | 2014-09-01 | 18 |  |
| 20 |  | Setup ATS config |  | 2014-09-02 | 2014-09-08 | 19 |  |

## Version 2 (saved 2014-05-26)

Note of the change: Update Bohai plan

Last finish 2014-10-21 → 2015-01-02 (+73d).

Added:

| ID | Task | Start | Finish | Predecessors |
| --- | --- | --- | --- | --- |
| 7 | **ATS Ethernet driver** | 2014-06-11 | 2014-09-17 | 4 |
| 8 | Support W5100 | 2014-06-11 | 2014-07-02 |  |
| 9 | Support mbed | 2014-07-02 | 2014-07-16 | 8 |
| 10 | Rewrite uIP (or lwIP) | 2014-07-16 | 2014-08-20 | 9 |
| 11 | Support ENC28J60 | 2014-08-20 | 2014-09-17 | 10 |

Removed: 12 Make up ethernet board; 13 STM32 Ethernet test

Changed:

| ID | Task | Start | Finish | Predecessors |
| --- | --- | --- | --- | --- |
| 1 | **ATS demo on tiny CPU** | 2014-06-03 → 2014-05-12 (-22d) | 2014-07-28 → 2014-05-26 (-63d) | 6 → none |
| 2 | AVR support to ATS | 2014-06-03 → 2014-05-12 (-22d) | 2014-06-30 → 2014-05-20 (-41d) |  |
| 3 | ARM support to ATS | 2014-07-01 → 2014-05-20 (-42d) | 2014-07-28 → 2014-05-26 (-63d) |  |
| 4 | **Translate ATS doc** |  | 2014-06-24 → 2014-06-10 (-14d) |  |
| 5 | ATS2TUTORIAL | 2014-06-03 → 2014-05-12 (-22d) | 2014-06-24 → 2014-05-26 (-29d) | 6 → none |
| 6 | INT2PROGINATS | 2014-05-12 → 2014-05-27 (+15d) | 2014-06-02 → 2014-06-10 (+8d) | none → 5 |
| 12 | OSC@Nagoya |  |  | 2 → 8 |
| 13 | OSC@Kansai |  |  | 3 → none |
| 14 | ATS OS X installer | 2014-07-29 → 2014-09-17 (+50d) | 2014-08-06 → 2014-09-26 (+51d) | 3 → 7 |
| 15 | ATS Windows installer | 2014-08-07 → 2014-09-26 (+50d) | 2014-09-03 → 2014-10-24 (+51d) |  |
| 16 | **Ready up Functional IoT** | 2014-09-04 → 2014-10-24 (+50d) | 2014-10-21 → 2014-11-21 (+31d) |  |
| 17 | gdbserver test | 2014-09-24 → 2014-10-24 (+30d) | 2014-10-02 → 2014-11-04 (+33d) | STM32 Ethernet test → none |
| 18 | Write manual | 2014-10-03 → 2014-11-04 (+32d) | 2014-10-21 → 2014-11-21 (+31d) |  |
| 19 | Meetup at Nagoya | 2014-10-21 → 2014-11-21 (+31d) | 2014-10-21 → 2014-11-21 (+31d) |  |
| 20 | **ATS snatches NetBSD** | 2014-07-29 → 2014-11-21 (+115d) | 2014-09-08 → 2015-01-02 (+116d) | 3 → 16 |
| 21 | Setup raspberrypi | 2014-07-29 → 2014-11-21 (+115d) | 2014-08-18 → 2014-12-12 (+116d) |  |
| 22 | Choose snatch target | 2014-08-19 → 2014-12-12 (+115d) | 2014-09-01 → 2014-12-26 (+116d) |  |
| 23 | Setup ATS config | 2014-09-02 → 2014-12-26 (+115d) | 2014-09-08 → 2015-01-02 (+116d) |  |

## Version 3 (saved 2014-06-01)

Note of the change: Update Bohai plan

Last finish 2015-01-02 → 2015-01-15 (+13d).

Added:

| ID | Task | Start | Finish | Predecessors |
| --- | --- | --- | --- | --- |
| 7 | Write coq2ats article | 2014-06-23 | 2014-08-01 | 6 |
| 15 | Parsec on ATS | 2014-09-02 | 2014-09-30 | 8 |
| 22 | **ATS package manager** | 2014-12-04 | 2015-01-05 | 18 |
| 23 | Understand opam design | 2014-12-04 | 2014-12-25 |  |
| 24 | Get design for ATS | 2014-12-25 | 2015-01-05 | 23 |

Changed:

| ID | Task | Start | Finish | Predecessors |
| --- | --- | --- | --- | --- |
| 4 | **Translate ATS doc** |  | 2014-06-10 → 2014-08-01 (+52d) |  |
| 6 | INT2PROGINATS |  | 2014-06-10 → 2014-06-20 (+10d) |  |
| 8 | **ATS Ethernet driver** | 2014-06-11 → 2014-05-27 (-15d) | 2014-09-17 → 2014-09-02 (-15d) | 4 → 5 |
| 9 | Support W5100 | 2014-06-11 → 2014-05-27 (-15d) | 2014-07-02 → 2014-06-17 (-15d) |  |
| 10 | Support mbed | 2014-07-02 → 2014-06-17 (-15d) | 2014-07-16 → 2014-07-01 (-15d) |  |
| 11 | Rewrite uIP (or lwIP) | 2014-07-16 → 2014-07-01 (-15d) | 2014-08-20 → 2014-08-05 (-15d) |  |
| 12 | Support ENC28J60 | 2014-08-20 → 2014-08-05 (-15d) | 2014-09-17 → 2014-09-02 (-15d) |  |
| 16 | ATS OS X installer | 2014-09-17 → 2014-09-30 (+13d) | 2014-09-26 → 2014-10-09 (+13d) | 8 → 15 |
| 17 | ATS Windows installer | 2014-09-26 → 2014-10-09 (+13d) | 2014-10-24 → 2014-11-06 (+13d) |  |
| 18 | **Ready up Functional IoT** | 2014-10-24 → 2014-11-06 (+13d) | 2014-11-21 → 2014-12-04 (+13d) |  |
| 19 | gdbserver test | 2014-10-24 → 2014-11-06 (+13d) | 2014-11-04 → 2014-11-17 (+13d) |  |
| 20 | Write manual | 2014-11-04 → 2014-11-17 (+13d) | 2014-11-21 → 2014-12-04 (+13d) |  |
| 21 | Meetup at Nagoya | 2014-11-21 → 2014-12-04 (+13d) | 2014-11-21 → 2014-12-04 (+13d) |  |
| 25 | **ATS snatches NetBSD** | 2014-11-21 → 2014-12-04 (+13d) | 2015-01-02 → 2015-01-15 (+13d) |  |
| 26 | Setup raspberrypi | 2014-11-21 → 2014-12-04 (+13d) | 2014-12-12 → 2014-12-25 (+13d) |  |
| 27 | Choose snatch target | 2014-12-12 → 2014-12-25 (+13d) | 2014-12-26 → 2015-01-08 (+13d) |  |
| 28 | Setup ATS config | 2014-12-26 → 2015-01-08 (+13d) | 2015-01-02 → 2015-01-15 (+13d) |  |

## Version 4 (saved 2014-07-20)

Note of the change: Update Bohai plan

Last finish 2015-01-15 → 2015-04-28 (+103d).

Added:

| ID | Task | Start | Finish | Predecessors |
| --- | --- | --- | --- | --- |
| 13 | **Web framework** | 2014-08-29 | 2014-12-19 | 8 |
| 14 | On POSIX | 2014-08-29 | 2014-09-26 |  |
| 15 | On mbed | 2014-09-26 | 2014-10-24 | 14 |
| 17 | On AVR | 2014-11-21 | 2014-12-19 | 16 |

Removed: 11 Rewrite uIP (or lwIP); 12 Support ENC28J60; 18 Ready up Functional IoT; 19 gdbserver test; 20 Write manual; 21 Meetup at Nagoya

Changed:

| ID | Task | Start | Finish | Predecessors | Other |
| --- | --- | --- | --- | --- | --- |
| 4 | **Translate ATS doc** |  | 2014-08-01 → 2014-08-29 (+28d) |  |  |
| 7 | BLUISH CODER |  | 2014-08-01 → 2014-08-29 (+28d) |  | was named Write coq2ats article |
| 8 | **ATS Ethernet driver** |  | 2014-09-02 → 2014-08-29 (-4d) |  |  |
| 9 | Support mbed | 2014-06-17 → 2014-05-27 (-21d) | 2014-07-01 → 2014-07-31 (+30d) | 10 → none |  |
| 10 | Support W5100 | 2014-05-27 → 2014-08-01 (+66d) | 2014-06-17 → 2014-08-29 (+73d) | none → 9 |  |
| 11 | OSC@Nagoya |  |  | 10 → none |  |
| 16 | Wiki application | 2014-09-30 → 2014-10-24 (+24d) | 2014-10-09 → 2014-11-21 (+43d) | 25 → 15 | was named ATS OS X installer |
| 18 | **ATS snatches NetBSD** | 2014-12-04 → 2014-12-19 (+15d) | 2015-01-15 → 2015-01-30 (+15d) | Ready up Functional IoT → 13 |  |
| 19 | Setup raspberrypi | 2014-12-04 → 2014-12-19 (+15d) | 2014-12-25 → 2015-01-09 (+15d) |  |  |
| 20 | Choose snatch target | 2014-12-25 → 2015-01-09 (+15d) | 2015-01-08 → 2015-01-23 (+15d) |  |  |
| 21 | Setup ATS config | 2015-01-08 → 2015-01-23 (+15d) | 2015-01-15 → 2015-01-30 (+15d) |  |  |
| 22 | **ATS package manager** | 2014-12-04 → 2015-01-30 (+57d) | 2015-01-05 → 2015-03-03 (+57d) | Ready up Functional IoT → 18 |  |
| 23 | Understand opam design | 2014-12-04 → 2015-01-30 (+57d) | 2014-12-25 → 2015-02-20 (+57d) |  |  |
| 24 | Get design for ATS | 2014-12-25 → 2015-02-20 (+57d) | 2015-01-05 → 2015-03-03 (+57d) |  |  |
| 25 | Parsec on ATS | 2014-09-02 → 2015-03-03 (+182d) | 2014-09-30 → 2015-03-31 (+182d) | 8 → 22 |  |
| 26 | ATS Windows installer | 2014-10-09 → 2015-03-31 (+173d) | 2014-11-06 → 2015-04-28 (+173d) | 16 → 25 |  |

## Version 5 (saved 2014-07-28)

Note of the change: Update plan

Last finish stays 2015-04-28.

Added:

| ID | Task | Duration | Start | Finish | Constraint |
| --- | --- | --- | --- | --- | --- |
| 13 | Haskell Symposium | 0d | 2014-09-04 | 2014-09-04 | must start on 2014-09-04 |
| 14 | OSC@Tokyo | 0d | 2014-10-20 | 2014-10-18 | must start on 2014-10-18 |

## Version 6 (saved 2014-08-11)

Note of the change: Update Bohai plan

Last finish 2015-04-28 → 2015-03-24 (-35d).

Added:

| ID | Task | Start | Finish | Predecessors |
| --- | --- | --- | --- | --- |
| 8 | Paper | 2014-11-24 | 2014-12-19 | 7 |
| 9 | **Translate Metasepi blog** | 2014-05-27 | 2014-08-29 | 5 |

Removed: 19 On AVR

Changed:

| ID | Task | Start | Finish | Predecessors | Other |
| --- | --- | --- | --- | --- | --- |
| 4 | **Translate ATS doc** |  | 2014-08-29 → 2014-12-19 (+112d) |  |  |
| 7 | BLUISH CODER |  | 2014-08-29 → 2014-11-21 (+84d) |  |  |
| 10 | Translate past entries | 2014-08-01 → 2014-05-27 (-66d) |  | 12 → none | was named Support W5100 |
| 11 | **ATS Ethernet driver** |  | 2014-08-29 → 2014-08-22 (-7d) |  |  |
| 12 | Support mbed |  | 2014-07-31 → 2014-08-22 (+22d) |  |  |
| 15 | Haskell Symposium |  |  | none → 9 |  |
| 16 | **Web framework** | 2014-08-29 → 2014-08-25 (-4d) | 2014-12-19 → 2014-11-14 (-35d) |  |  |
| 17 | On POSIX | 2014-08-29 → 2014-08-25 (-4d) | 2014-09-26 → 2014-09-19 (-7d) |  |  |
| 18 | On mbed | 2014-09-26 → 2014-09-22 (-4d) | 2014-10-24 → 2014-10-17 (-7d) |  |  |
| 19 | Wiki application | 2014-10-24 → 2014-10-20 (-4d) | 2014-11-21 → 2014-11-14 (-7d) |  |  |
| 20 | OSC@Tokyo |  |  | none → 18 |  |
| 21 | **ATS snatches NetBSD** | 2014-12-19 → 2014-11-17 (-32d) | 2015-01-30 → 2014-12-26 (-35d) |  |  |
| 22 | Setup raspberrypi | 2014-12-19 → 2014-11-17 (-32d) | 2015-01-09 → 2014-12-05 (-35d) |  |  |
| 23 | Choose snatch target | 2015-01-09 → 2014-12-08 (-32d) | 2015-01-23 → 2014-12-19 (-35d) |  |  |
| 24 | Setup ATS config | 2015-01-23 → 2014-12-22 (-32d) | 2015-01-30 → 2014-12-26 (-35d) |  |  |
| 25 | **ATS package manager** | 2015-01-30 → 2014-12-29 (-32d) | 2015-03-03 → 2015-01-27 (-35d) |  |  |
| 26 | Understand opam design | 2015-01-30 → 2014-12-29 (-32d) | 2015-02-20 → 2015-01-16 (-35d) |  |  |
| 27 | Get design for ATS | 2015-02-20 → 2015-01-19 (-32d) | 2015-03-03 → 2015-01-27 (-35d) |  |  |
| 28 | Parsec on ATS | 2015-03-03 → 2015-01-28 (-34d) | 2015-03-31 → 2015-02-24 (-35d) |  |  |
| 29 | ATS Windows installer | 2015-03-31 → 2015-02-25 (-34d) | 2015-04-28 → 2015-03-24 (-35d) |  |  |

## Version 7 (saved 2014-08-13)

Note of the change: Update Bohai plan

Last finish stays 2015-03-24.

Changed:

| ID | Task | Start | Finish | Predecessors |
| --- | --- | --- | --- | --- |
| 4 | **Translate ATS doc** |  | 2014-12-19 → 2014-12-23 (+4d) |  |
| 7 | Paper | 2014-11-24 → 2014-06-23 (-154d) | 2014-12-19 → 2014-08-12 (-129d) | 8 → 6 |
| 8 | BLUISH CODER | 2014-06-23 → 2014-08-12 (+50d) | 2014-11-21 → 2014-12-23 (+32d) | 6 → 7 |
| 9 | **Translate Metasepi blog** |  | 2014-08-29 → 2014-09-03 (+5d) |  |
| 10 | Translate past entries |  | 2014-08-29 → 2014-09-03 (+5d) |  |

## Version 8 (saved 2014-08-15)

Note of the change: Update Bohai plan

Last finish stays 2015-03-24.

Added:

| ID | Task | Start | Finish | Predecessors |
| --- | --- | --- | --- | --- |
| 8 | Wiki | 2014-08-12 | 2014-09-02 | 7 |
| 10 | DML Paper | 2015-01-13 | 2015-02-25 | 9 |

Changed:

| ID | Task | Start | Finish | Predecessors | Other |
| --- | --- | --- | --- | --- | --- |
| 4 | **Translate ATS doc** |  | 2014-12-23 → 2015-02-25 (+64d) |  |  |
| 7 | ATS Paper |  |  |  | was named Paper |
| 9 | BLUISH CODER | 2014-08-12 → 2014-09-02 (+21d) | 2014-12-23 → 2015-01-13 (+21d) | 7 → 8 |  |

## Version 9 (saved 2014-08-23)

Note of the change: Update Bohai plan

Last finish 2015-03-24 → 2015-03-18 (-6d).

Changed:

| ID | Task | Start | Finish |
| --- | --- | --- | --- |
| 4 | **Translate ATS doc** |  | 2015-02-25 → 2015-03-18 (+21d) |
| 8 | Wiki |  | 2014-09-02 → 2014-09-23 (+21d) |
| 9 | BLUISH CODER | 2014-09-02 → 2014-09-23 (+21d) | 2015-01-13 → 2015-02-03 (+21d) |
| 10 | DML Paper | 2015-01-13 → 2015-02-03 (+21d) | 2015-02-25 → 2015-03-18 (+21d) |
| 11 | **Translate Metasepi blog** |  | 2014-09-03 → 2014-08-22 (-12d) |
| 12 | Translate past entries |  | 2014-09-03 → 2014-08-22 (-12d) |
| 13 | **ATS Ethernet driver** |  | 2014-08-22 → 2014-09-01 (+10d) |
| 14 | Support mbed |  | 2014-08-22 → 2014-09-01 (+10d) |
| 18 | **Web framework** | 2014-08-25 → 2014-09-02 (+8d) | 2014-11-14 → 2014-11-10 (-4d) |
| 19 | On POSIX | 2014-08-25 → 2014-09-02 (+8d) | 2014-09-19 → 2014-09-22 (+3d) |
| 20 | On mbed | 2014-09-22 → 2014-09-23 (+1d) | 2014-10-17 → 2014-10-13 (-4d) |
| 21 | Wiki application | 2014-10-20 → 2014-10-14 (-6d) | 2014-11-14 → 2014-11-10 (-4d) |
| 23 | **ATS snatches NetBSD** | 2014-11-17 → 2014-11-11 (-6d) | 2014-12-26 → 2014-12-22 (-4d) |
| 24 | Setup raspberrypi | 2014-11-17 → 2014-11-11 (-6d) | 2014-12-05 → 2014-12-01 (-4d) |
| 25 | Choose snatch target | 2014-12-08 → 2014-12-02 (-6d) | 2014-12-19 → 2014-12-15 (-4d) |
| 26 | Setup ATS config | 2014-12-22 → 2014-12-16 (-6d) | 2014-12-26 → 2014-12-22 (-4d) |
| 27 | **ATS package manager** | 2014-12-29 → 2014-12-23 (-6d) | 2015-01-27 → 2015-01-21 (-6d) |
| 28 | Understand opam design | 2014-12-29 → 2014-12-23 (-6d) | 2015-01-16 → 2015-01-12 (-4d) |
| 29 | Get design for ATS | 2015-01-19 → 2015-01-13 (-6d) | 2015-01-27 → 2015-01-21 (-6d) |
| 30 | Parsec on ATS | 2015-01-28 → 2015-01-22 (-6d) | 2015-02-24 → 2015-02-18 (-6d) |
| 31 | ATS Windows installer | 2015-02-25 → 2015-02-19 (-6d) | 2015-03-24 → 2015-03-18 (-6d) |

## Version 10 (saved 2014-10-04)

Note of the change: Update Bohai plan

Last finish 2015-03-18 → 2015-07-03 (+107d).

Added:

| ID | Task | Start | Finish | Predecessors |
| --- | --- | --- | --- | --- |
| 16 | **Setup to snatch Linux** | 2014-08-25 | 2014-11-05 | 11 |
| 20 | **Lifegame on FSM-55** | 2014-11-06 | 2015-01-14 | 16 |
| 21 | Snatch FSM-55 | 2014-11-06 | 2014-11-26 |  |
| 22 | Lifegame on POSIX | 2014-11-27 | 2014-12-17 | 21 |

Removed: 31 ATS Windows installer

Changed:

| ID | Task | Start | Finish | Predecessors | Other |
| --- | --- | --- | --- | --- | --- |
| 17 | Setup raspberrypi | 2014-11-11 → 2014-08-25 (-78d) | 2014-12-01 → 2014-10-08 (-54d) |  |  |
| 18 | Setup ATS config | 2014-12-16 → 2014-10-09 (-68d) | 2014-12-22 → 2014-10-22 (-61d) | 19 → 17 |  |
| 19 | Choose snatch target | 2014-12-02 → 2014-10-23 (-40d) | 2014-12-15 → 2014-11-05 (-40d) | 17 → 18 |  |
| 23 | Lifegame on FSM-55 | 2014-11-11 → 2014-12-18 (+37d) | 2014-12-22 → 2015-01-14 (+23d) | 26 → 22 | was named ATS snatches NetBSD |
| 24 | **ATS Ethernet driver** | 2014-05-27 → 2015-01-15 (+233d) | 2014-09-01 → 2015-02-25 (+177d) | 5 → 20 |  |
| 25 | Support mbed | 2014-05-27 → 2015-01-15 (+233d) | 2014-09-01 → 2015-02-25 (+177d) |  |  |
| 26 | **Web framework** | 2014-09-02 → 2015-02-26 (+177d) | 2014-11-10 → 2015-05-06 (+177d) |  |  |
| 27 | On POSIX | 2014-09-02 → 2015-02-26 (+177d) | 2014-09-22 → 2015-03-18 (+177d) |  |  |
| 28 | On mbed | 2014-09-23 → 2015-03-19 (+177d) | 2014-10-13 → 2015-04-08 (+177d) |  |  |
| 29 | Wiki application | 2014-10-14 → 2015-04-09 (+177d) | 2014-11-10 → 2015-05-06 (+177d) |  |  |
| 30 | OSC@Tokyo |  |  | 28 → none |  |
| 31 | **ATS package manager** | 2014-12-23 → 2015-05-07 (+135d) | 2015-01-21 → 2015-06-05 (+135d) | 23 → 26 |  |
| 32 | Understand opam design | 2014-12-23 → 2015-05-07 (+135d) | 2015-01-12 → 2015-05-27 (+135d) |  |  |
| 33 | Get design for ATS | 2015-01-13 → 2015-05-28 (+135d) | 2015-01-21 → 2015-06-05 (+135d) |  |  |
| 34 | Parsec on ATS | 2015-01-22 → 2015-06-08 (+137d) | 2015-02-18 → 2015-07-03 (+135d) |  |  |

## Version 11 (saved 2014-11-14)

Note of the change: Update bohai plan

Last finish 2015-07-03 → 2016-05-27 (+329d).

Added:

| ID | Task | Start | Finish | Predecessors |
| --- | --- | --- | --- | --- |
| 18 | Setup gdbserver | 2014-10-20 | 2014-11-07 |  |
| 22 | **FSM-55 from PCB** | 2014-10-20 | 2014-12-30 | 16 |
| 23 | Prepare the parts | 2014-10-20 | 2014-11-25 |  |
| 26 | Schedule fpiot meetup | 2014-12-24 | 2014-12-30 | 25 |
| 27 | **1wire protocol** | 2015-01-19 | 2015-05-22 | 22, 17 |
| 29 | Single network | 2015-03-02 | 2015-04-10 | 28 |
| 30 | Sequence network | 2015-04-13 | 2015-05-22 | 29 |
| 31 | **Square network** | 2015-05-25 | 2015-11-06 | 27 |
| 32 | Hardware design | 2015-05-25 | 2015-07-03 |  |
| 33 | Single network | 2015-07-06 | 2015-08-14 | 32 |
| 34 | Network simulator | 2015-08-17 | 2015-09-25 | 33 |
| 35 | Multiple network | 2015-09-28 | 2015-11-06 | 34 |
| 42 | On Arduino | 2016-02-11 | 2016-03-02 | 41 |

Changed:

| ID | Task | Start | Finish | Predecessors | Other |
| --- | --- | --- | --- | --- | --- |
| 17 | **Lifegame on FSM-55** | 2014-11-06 → 2014-10-20 (-17d) | 2015-01-14 → 2015-01-16 (+2d) | 36 → 16 |  |
| 19 | Snatch FSM-55 | 2014-11-06 → 2014-11-10 (+4d) | 2014-11-26 → 2014-11-28 (+2d) | none → 18 |  |
| 20 | Lifegame on POSIX | 2014-11-27 → 2014-12-01 (+4d) | 2014-12-17 → 2014-12-19 (+2d) |  |  |
| 21 | Lifegame on FSM-55 | 2014-12-18 → 2014-12-22 (+4d) | 2015-01-14 → 2015-01-16 (+2d) |  |  |
| 24 | Understand reflow | 2015-01-15 → 2014-11-26 (-50d) | 2015-02-25 → 2014-12-09 (-78d) | 17 → 23 | was named ATS Ethernet driver |
| 25 | Make some boards | 2015-01-15 → 2014-12-10 (-36d) | 2015-02-25 → 2014-12-23 (-64d) | none → 24 | was named Support mbed |
| 28 | Hardware design | 2015-03-19 → 2015-01-19 (-59d) | 2015-04-08 → 2015-02-27 (-40d) | 41 → none | was named On mbed |
| 36 | **Setup to snatch Linux** | 2014-08-25 → 2015-11-09 (+441d) | 2014-11-05 → 2016-01-20 (+441d) | 11 → 31 |  |
| 37 | Setup raspberrypi | 2014-08-25 → 2015-11-09 (+441d) | 2014-10-08 → 2015-12-23 (+441d) |  |  |
| 38 | Setup ATS config | 2014-10-09 → 2015-12-24 (+441d) | 2014-10-22 → 2016-01-06 (+441d) |  |  |
| 39 | Choose snatch target | 2014-10-23 → 2016-01-07 (+441d) | 2014-11-05 → 2016-01-20 (+441d) |  |  |
| 40 | **Web framework** | 2015-02-26 → 2016-01-21 (+329d) | 2015-05-06 → 2016-03-30 (+329d) | 24 → 36 |  |
| 41 | On POSIX | 2015-02-26 → 2016-01-21 (+329d) | 2015-03-18 → 2016-02-10 (+329d) |  |  |
| 43 | Wiki application | 2015-04-09 → 2016-03-03 (+329d) | 2015-05-06 → 2016-03-30 (+329d) | 28 → 42 |  |
| 44 | **ATS package manager** | 2015-05-07 → 2016-03-31 (+329d) | 2015-06-05 → 2016-04-29 (+329d) |  |  |
| 45 | Understand opam design | 2015-05-07 → 2016-03-31 (+329d) | 2015-05-27 → 2016-04-20 (+329d) |  |  |
| 46 | Get design for ATS | 2015-05-28 → 2016-04-21 (+329d) | 2015-06-05 → 2016-04-29 (+329d) |  |  |
| 47 | Parsec on ATS | 2015-06-08 → 2016-05-02 (+329d) | 2015-07-03 → 2016-05-27 (+329d) |  |  |

## Version 12 (saved 2014-11-30)

Note of the change: Update bohai plan

Last finish 2016-05-27 → 2016-11-10 (+167d).

Added:

| ID | Task | Start | Finish | Predecessors |
| --- | --- | --- | --- | --- |
| 36 | **プログラミングの基礎 on ATS** | 2015-10-29 | 2016-11-10 | 31 |
| 37 | In Japanese | 2015-10-29 | 2016-03-03 |  |
| 38 | In English | 2016-03-03 | 2016-11-10 | 37 |

Changed:

| ID | Task | Start | Finish |
| --- | --- | --- | --- |
| 17 | **Lifegame on FSM-55** |  | 2015-01-16 → 2015-02-18 (+33d) |
| 19 | Snatch FSM-55 |  | 2014-11-28 → 2014-12-31 (+33d) |
| 20 | Lifegame on POSIX | 2014-12-01 → 2014-12-31 (+30d) | 2014-12-19 → 2015-01-21 (+33d) |
| 21 | Lifegame on FSM-55 | 2014-12-22 → 2015-01-21 (+30d) | 2015-01-16 → 2015-02-18 (+33d) |
| 27 | **1wire protocol** | 2015-01-19 → 2015-02-18 (+30d) | 2015-05-22 → 2015-06-24 (+33d) |
| 28 | Hardware design | 2015-01-19 → 2015-02-18 (+30d) | 2015-02-27 → 2015-04-01 (+33d) |
| 29 | Single network | 2015-03-02 → 2015-04-01 (+30d) | 2015-04-10 → 2015-05-13 (+33d) |
| 30 | Sequence network | 2015-04-13 → 2015-05-13 (+30d) | 2015-05-22 → 2015-06-24 (+33d) |
| 31 | **Square network** | 2015-05-25 → 2015-06-24 (+30d) | 2015-11-06 → 2015-10-29 (-8d) |
| 32 | Hardware design | 2015-05-25 → 2015-06-24 (+30d) | 2015-07-03 → 2015-08-05 (+33d) |
| 33 | Single network | 2015-07-06 → 2015-08-05 (+30d) | 2015-08-14 → 2015-09-16 (+33d) |
| 34 | Network simulator | 2015-08-17 → 2015-09-16 (+30d) | 2015-09-25 → 2015-10-28 (+33d) |
| 35 | Multiple network | 2015-09-28 → 2015-10-28 (+30d) | 2015-11-06 → 2015-10-29 (-8d) |
| 39 | **Setup to snatch Linux** | 2015-11-09 → 2015-10-29 (-11d) | 2016-01-20 → 2016-01-12 (-8d) |
| 40 | Setup raspberrypi | 2015-11-09 → 2015-10-29 (-11d) | 2015-12-23 → 2015-12-15 (-8d) |
| 41 | Setup ATS config | 2015-12-24 → 2015-12-15 (-9d) | 2016-01-06 → 2015-12-29 (-8d) |
| 42 | Choose snatch target | 2016-01-07 → 2015-12-29 (-9d) | 2016-01-20 → 2016-01-12 (-8d) |
| 43 | **Web framework** | 2016-01-21 → 2016-01-12 (-9d) | 2016-03-30 → 2016-03-22 (-8d) |
| 44 | On POSIX | 2016-01-21 → 2016-01-12 (-9d) | 2016-02-10 → 2016-02-02 (-8d) |
| 45 | On Arduino | 2016-02-11 → 2016-02-02 (-9d) | 2016-03-02 → 2016-02-23 (-8d) |
| 46 | Wiki application | 2016-03-03 → 2016-02-23 (-9d) | 2016-03-30 → 2016-03-22 (-8d) |
| 47 | **ATS package manager** | 2016-03-31 → 2016-03-22 (-9d) | 2016-04-29 → 2016-04-21 (-8d) |
| 48 | Understand opam design | 2016-03-31 → 2016-03-22 (-9d) | 2016-04-20 → 2016-04-12 (-8d) |
| 49 | Get design for ATS | 2016-04-21 → 2016-04-12 (-9d) | 2016-04-29 → 2016-04-21 (-8d) |
| 50 | Parsec on ATS | 2016-05-02 → 2016-04-21 (-11d) | 2016-05-27 → 2016-05-19 (-8d) |

## Version 13 (saved 2014-12-07)

Note of the change: Update bohai plan

Last finish 2016-11-10 → 2016-10-20 (-21d).

Added:

| ID | Task | Duration | Start | Finish | Predecessors | Constraint |
| --- | --- | --- | --- | --- | --- | --- |
| 21 | Submit demo to PPL 2015 | 0d | 2015-02-09 | 2015-02-08 | 20 | must start on 2015-02-08 |
| 31 | Demo at PPL 2015 | 0d | 2015-03-04 | 2015-03-04 |  | must start on 2015-03-04 |

Removed: 20 Lifegame on POSIX

Changed:

| ID | Task | Start | Finish | Predecessors |
| --- | --- | --- | --- | --- |
| 17 | **Lifegame on FSM-55** |  | 2015-02-18 → 2015-01-28 (-21d) |  |
| 20 | Lifegame on FSM-55 | 2015-01-21 → 2014-12-31 (-21d) | 2015-02-18 → 2015-01-28 (-21d) | Lifegame on POSIX → 19 |
| 27 | **1wire protocol** | 2015-02-18 → 2015-01-28 (-21d) | 2015-06-24 → 2015-06-03 (-21d) |  |
| 28 | Hardware design | 2015-02-18 → 2015-01-28 (-21d) | 2015-04-01 → 2015-03-11 (-21d) |  |
| 29 | Single network | 2015-04-01 → 2015-03-11 (-21d) | 2015-05-13 → 2015-04-22 (-21d) |  |
| 30 | Sequence network | 2015-05-13 → 2015-04-22 (-21d) | 2015-06-24 → 2015-06-03 (-21d) |  |
| 32 | **Square network** | 2015-06-24 → 2015-06-03 (-21d) | 2015-10-29 → 2015-10-08 (-21d) |  |
| 33 | Hardware design | 2015-06-24 → 2015-06-03 (-21d) | 2015-08-05 → 2015-07-15 (-21d) |  |
| 34 | Single network | 2015-08-05 → 2015-07-15 (-21d) | 2015-09-16 → 2015-08-26 (-21d) |  |
| 35 | Network simulator | 2015-09-16 → 2015-08-26 (-21d) | 2015-10-28 → 2015-10-07 (-21d) |  |
| 36 | Multiple network | 2015-10-28 → 2015-10-07 (-21d) | 2015-10-29 → 2015-10-08 (-21d) |  |
| 37 | **プログラミングの基礎 on ATS** | 2015-10-29 → 2015-10-08 (-21d) | 2016-11-10 → 2016-10-20 (-21d) |  |
| 38 | In Japanese | 2015-10-29 → 2015-10-08 (-21d) | 2016-03-03 → 2016-02-11 (-21d) |  |
| 39 | In English | 2016-03-03 → 2016-02-11 (-21d) | 2016-11-10 → 2016-10-20 (-21d) |  |
| 40 | **Setup to snatch Linux** | 2015-10-29 → 2015-10-08 (-21d) | 2016-01-12 → 2015-12-22 (-21d) |  |
| 41 | Setup raspberrypi | 2015-10-29 → 2015-10-08 (-21d) | 2015-12-15 → 2015-11-24 (-21d) |  |
| 42 | Setup ATS config | 2015-12-15 → 2015-11-24 (-21d) | 2015-12-29 → 2015-12-08 (-21d) |  |
| 43 | Choose snatch target | 2015-12-29 → 2015-12-08 (-21d) | 2016-01-12 → 2015-12-22 (-21d) |  |
| 44 | **Web framework** | 2016-01-12 → 2015-12-22 (-21d) | 2016-03-22 → 2016-03-01 (-21d) |  |
| 45 | On POSIX | 2016-01-12 → 2015-12-22 (-21d) | 2016-02-02 → 2016-01-12 (-21d) |  |
| 46 | On Arduino | 2016-02-02 → 2016-01-12 (-21d) | 2016-02-23 → 2016-02-02 (-21d) |  |
| 47 | Wiki application | 2016-02-23 → 2016-02-02 (-21d) | 2016-03-22 → 2016-03-01 (-21d) |  |
| 48 | **ATS package manager** | 2016-03-22 → 2016-03-01 (-21d) | 2016-04-21 → 2016-03-31 (-21d) |  |
| 49 | Understand opam design | 2016-03-22 → 2016-03-01 (-21d) | 2016-04-12 → 2016-03-22 (-21d) |  |
| 50 | Get design for ATS | 2016-04-12 → 2016-03-22 (-21d) | 2016-04-21 → 2016-03-31 (-21d) |  |
| 51 | Parsec on ATS | 2016-04-21 → 2016-03-31 (-21d) | 2016-05-19 → 2016-04-28 (-21d) |  |

## Version 14 (saved 2014-12-24)

Note of the change: Update bohai plan

Last finish 2016-10-20 → 2015-11-18 (-337d).

Added:

| ID | Task | Duration | Start | Finish | Predecessors | Constraint |
| --- | --- | --- | --- | --- | --- | --- |
| 32 | OSC 2015 Nagoya | 0d | 2015-05-22 | 2015-05-22 | 30 | must start on 2015-05-22 |
| 37 | OSC 2015 Hokkaido | 0d | 2015-06-12 | 2015-06-12 | 33 | must start on 2015-06-12 |
| 40 | Plan in English |  | 2015-09-24 | 2015-10-21 | 39 |  |

Removed: 39 In English; 44 Web framework; 45 On POSIX; 46 On Arduino; 47 Wiki application

Changed:

| ID | Task | Start | Finish | Predecessors | Other |
| --- | --- | --- | --- | --- | --- |
| 4 | **Translate ATS doc** |  | 2015-03-18 → 2015-09-30 (+196d) |  |  |
| 8 | Wiki |  | 2014-09-23 → 2014-09-02 (-21d) |  |  |
| 9 | BLUISH CODER | 2014-09-23 → 2014-09-03 (-20d) | 2015-02-03 → 2015-08-17 (+195d) |  |  |
| 10 | DML Paper | 2015-02-03 → 2015-08-17 (+195d) | 2015-03-18 → 2015-09-30 (+196d) |  |  |
| 17 | **Lifegame on FSM-55** |  | 2015-01-28 → 2015-01-22 (-6d) |  |  |
| 19 | Snatch FSM-55 |  | 2014-12-31 → 2015-01-02 (+2d) |  |  |
| 20 | Lifegame on FSM-55 | 2014-12-31 → 2015-01-05 (+5d) | 2015-01-28 → 2015-01-22 (-6d) |  |  |
| 21 | Paper for PPL 2015 | 2015-02-09 → 2015-01-23 (-17d) | 2015-02-08 → 2015-01-23 (-16d) | 20 → 19 | was named Submit demo to PPL 2015; constraint must start on 2015-02-08 → must start on 2015-01-23 |
| 22 | **FSM-55 from PCB** |  | 2014-12-30 → 2015-01-30 (+31d) |  |  |
| 25 | Make some boards |  | 2014-12-23 → 2015-01-23 (+31d) |  |  |
| 26 | Schedule fpiot meetup | 2014-12-24 → 2015-01-26 (+33d) | 2014-12-30 → 2015-01-30 (+31d) |  |  |
| 27 | **1wire protocol** | 2015-01-28 → 2015-02-02 (+5d) | 2015-06-03 → 2015-05-20 (-14d) |  |  |
| 28 | Hardware design | 2015-01-28 → 2015-02-02 (+5d) | 2015-03-11 → 2015-02-13 (-26d) |  |  |
| 29 | Single network | 2015-03-11 → 2015-02-16 (-23d) | 2015-04-22 → 2015-03-03 (-50d) |  |  |
| 30 | Sequence network | 2015-04-22 → 2015-03-04 (-49d) | 2015-06-03 → 2015-05-20 (-14d) |  |  |
| 31 | Demo at PPL 2015 |  |  | none → 29 |  |
| 33 | **Setup to snatch Linux** | 2015-10-08 → 2015-03-04 (-218d) | 2015-12-22 → 2015-05-15 (-221d) | 41 → 29 |  |
| 34 | Setup raspberrypi | 2015-10-08 → 2015-03-04 (-218d) | 2015-11-24 → 2015-04-17 (-221d) |  |  |
| 35 | Setup ATS config | 2015-11-24 → 2015-04-20 (-218d) | 2015-12-08 → 2015-05-01 (-221d) |  |  |
| 36 | Choose snatch target | 2015-12-08 → 2015-05-04 (-218d) | 2015-12-22 → 2015-05-15 (-221d) |  |  |
| 38 | **プログラミングの基礎 on ATS** | 2015-10-08 → 2015-05-21 (-140d) | 2016-10-20 → 2015-10-21 (-365d) | 41 → 27 |  |
| 39 | In Japanese | 2015-10-08 → 2015-05-21 (-140d) | 2016-02-11 → 2015-09-23 (-141d) |  |  |
| 41 | **Square network** | 2015-06-03 → 2015-05-18 (-16d) | 2015-10-08 → 2015-09-21 (-17d) | 27 → 33 |  |
| 42 | Hardware design | 2015-06-03 → 2015-05-18 (-16d) | 2015-07-15 → 2015-06-26 (-19d) |  |  |
| 43 | Single network | 2015-07-15 → 2015-06-29 (-16d) | 2015-08-26 → 2015-08-07 (-19d) |  |  |
| 44 | Network simulator | 2015-08-26 → 2015-08-10 (-16d) | 2015-10-07 → 2015-09-18 (-19d) |  |  |
| 45 | Multiple network | 2015-10-07 → 2015-09-21 (-16d) | 2015-10-08 → 2015-09-21 (-17d) |  |  |
| 46 | **ATS package manager** | 2016-03-01 → 2015-09-22 (-161d) | 2016-03-31 → 2015-10-21 (-162d) | Web framework → 41 |  |
| 47 | Understand opam design | 2016-03-01 → 2015-09-22 (-161d) | 2016-03-22 → 2015-10-12 (-162d) |  |  |
| 48 | Get design for ATS | 2016-03-22 → 2015-10-13 (-161d) | 2016-03-31 → 2015-10-21 (-162d) |  |  |
| 49 | Parsec on ATS | 2016-03-31 → 2015-10-22 (-161d) | 2016-04-28 → 2015-11-18 (-162d) |  |  |

## Version 15 (saved 2014-12-29)

Note of the change: Update Bohai plan

Last finish 2015-11-18 → 2017-02-15 (+455d).

Added:

| ID | Task | Duration | Start | Finish | Predecessors | Constraint |
| --- | --- | --- | --- | --- | --- | --- |
| 21 | Fix Makefile |  | 2014-12-25 | 2014-12-31 | 20 |  |
| 23 | **Snatch NFSv2** |  | 2015-01-01 | 2015-02-25 | 17 |  |
| 24 | Snatch |  | 2015-01-01 | 2015-01-28 |  |  |
| 25 | Testing |  | 2015-01-29 | 2015-02-11 | 24 |  |
| 26 | Benchmark |  | 2015-02-12 | 2015-02-25 | 25 |  |
| 27 | Paper for ICFP 2015 | 0d | 2015-02-27 | 2015-02-27 | 23 | must start on 2015-02-27 |
| 33 | **SNS ATS2** |  | 2015-05-21 | 2015-10-07 | 29 |  |
| 34 | Conpile error badges |  | 2015-05-21 | 2015-06-17 |  |  |
| 35 | Show URL to forum |  | 2015-06-18 | 2015-07-15 | 34 |  |
| 36 | Show how to fix it |  | 2015-07-16 | 2015-10-07 | 35 |  |

Removed: 40 Plan in English

Changed:

| ID | Task | Start | Finish | Predecessors |
| --- | --- | --- | --- | --- |
| 17 | **Setup to snatch Linux** | 2015-03-04 → 2014-08-25 (-191d) | 2015-05-15 → 2014-12-31 (-135d) | 48 → 11 |
| 18 | Setup raspberrypi | 2015-03-04 → 2014-08-25 (-191d) | 2015-04-17 → 2014-10-08 (-191d) |  |
| 19 | Setup ATS config | 2015-04-20 → 2014-10-09 (-193d) | 2015-05-01 → 2014-11-21 (-161d) |  |
| 20 | Choose snatch target | 2015-05-04 → 2014-11-24 (-161d) | 2015-05-15 → 2014-12-24 (-142d) |  |
| 22 | Paper for PPL 2015 |  |  | 39 → 17 |
| 28 | Demo at PPL 2015 |  |  | 48 → none |
| 29 | **プログラミングの基礎 on ATS** | 2015-05-21 → 2015-02-26 (-84d) | 2015-10-21 → 2015-05-20 (-154d) | 46 → 23 |
| 30 | In Japanese | 2015-05-21 → 2015-02-26 (-84d) | 2015-09-23 → 2015-05-20 (-126d) |  |
| 31 | OSC 2015 Nagoya |  |  | 49 → 29 |
| 32 | OSC 2015 Hokkaido |  |  | 17 → none |
| 37 | **Lifegame on FSM-55** | 2014-10-20 → 2015-10-08 (+353d) | 2015-01-22 → 2016-01-12 (+355d) | 16 → 33 |
| 38 | Setup gdbserver | 2014-10-20 → 2015-10-08 (+353d) | 2014-11-07 → 2015-10-28 (+355d) |  |
| 39 | Snatch FSM-55 | 2014-11-10 → 2015-10-29 (+353d) | 2015-01-02 → 2015-12-23 (+355d) |  |
| 40 | Lifegame on FSM-55 | 2015-01-05 → 2015-12-24 (+353d) | 2015-01-22 → 2016-01-12 (+355d) |  |
| 41 | **FSM-55 from PCB** | 2014-10-20 → 2016-01-13 (+450d) | 2015-01-30 → 2016-04-26 (+452d) | 16 → 37 |
| 42 | Prepare the parts | 2014-10-20 → 2016-01-13 (+450d) | 2014-11-25 → 2016-02-18 (+450d) |  |
| 43 | Understand reflow | 2014-11-26 → 2016-02-19 (+450d) | 2014-12-09 → 2016-03-03 (+450d) |  |
| 44 | Make some boards | 2014-12-10 → 2016-03-04 (+450d) | 2015-01-23 → 2016-04-19 (+452d) |  |
| 45 | Schedule fpiot meetup | 2015-01-26 → 2016-04-20 (+450d) | 2015-01-30 → 2016-04-26 (+452d) |  |
| 46 | **1wire protocol** | 2015-02-02 → 2016-04-27 (+450d) | 2015-05-20 → 2016-08-12 (+450d) | 41, 37 → 41 |
| 47 | Hardware design | 2015-02-02 → 2016-04-27 (+450d) | 2015-02-13 → 2016-05-10 (+452d) |  |
| 48 | Single network | 2015-02-16 → 2016-05-11 (+450d) | 2015-03-03 → 2016-05-26 (+450d) |  |
| 49 | Sequence network | 2015-03-04 → 2016-05-27 (+450d) | 2015-05-20 → 2016-08-12 (+450d) |  |
| 50 | **Square network** | 2015-05-18 → 2016-08-15 (+455d) | 2015-09-21 → 2016-12-19 (+455d) | 17 → 46 |
| 51 | Hardware design | 2015-05-18 → 2016-08-15 (+455d) | 2015-06-26 → 2016-09-23 (+455d) |  |
| 52 | Single network | 2015-06-29 → 2016-09-26 (+455d) | 2015-08-07 → 2016-11-04 (+455d) |  |
| 53 | Network simulator | 2015-08-10 → 2016-11-07 (+455d) | 2015-09-18 → 2016-12-16 (+455d) |  |
| 54 | Multiple network | 2015-09-21 → 2016-12-19 (+455d) | 2015-09-21 → 2016-12-19 (+455d) |  |
| 55 | **ATS package manager** | 2015-09-22 → 2016-12-20 (+455d) | 2015-10-21 → 2017-01-18 (+455d) |  |
| 56 | Understand opam design | 2015-09-22 → 2016-12-20 (+455d) | 2015-10-12 → 2017-01-09 (+455d) |  |
| 57 | Get design for ATS | 2015-10-13 → 2017-01-10 (+455d) | 2015-10-21 → 2017-01-18 (+455d) |  |
| 58 | Parsec on ATS | 2015-10-22 → 2017-01-19 (+455d) | 2015-11-18 → 2017-02-15 (+455d) |  |
